# Movimiento Ecologista

How a schedule from MS Project changed from version to version. A marks actual dates.

## Version 1 (saved 2018-06-02)

Note of the change: Planeacion...agregué los archivos: Diagrama de gantt, EDT(project), Herramienta de administracion de Riesgos, Plan de riesgos y BD de Riesgos

| ID | WBS | Task | Duration | Start | Finish | Predecessors | Complete | Total float | Constraint |
| --- | --- | --- | --- | --- | --- | --- | --- | --- | --- |
| 1 | 1 | **MPPP** | 58.5d | 2018-05-14 A | 2018-08-02 |  | 8% | 0d |  |
| 2 | 1.1 | **Inicio** | 1d | 2018-05-14 A | 2018-05-14 |  | 90% | 2d |  |
| 3 |  | Acta de inicio | 1d | 2018-05-14 A | 2018-05-14 |  | 90% | 2d | start no earlier than 2018-05-14 |
| 4 | 1.2 | **Planeación** | 7.75d | 2018-05-15 A | 2018-05-24 | 2 | 55% | 0d |  |
| 5 |  | Presupuesto | 2d | 2018-05-15 | 2018-05-16 | 3 |  | 5.75d | finish no earlier than 2018-05-15 |
| 6 |  | Estudio de roles | 1d | 2018-05-17 A | 2018-05-17 A | 5 | 100% |  |  |
| 7 |  | Selección del ciclo de vida | 2h | 2018-05-18 A | 2018-05-18 A | 6 | 100% |  |  |
| 8 |  | Declaración del alcance | 1d | 2018-05-18 A | 2018-05-21 A | 7 | 100% |  |  |
| 9 |  | Estructura de desglose de trabajo (EDT) | 2d | 2018-05-21 A | 2018-05-23 A | 8 | 100% |  | finish no earlier than 2018-05-18 |
| 10 |  | Plan de comunicación | 6h | 2018-05-23 | 2018-05-23 | 9 |  | 0d | start no earlier than 2018-05-21 |
| 11 |  | Póliticas de calidad | 6h | 2018-05-24 | 2018-05-24 | 10 |  | 0d | start no earlier than 2018-05-22 |
| 12 | 1.3 | **Análisis** | 5d | 2018-05-24 | 2018-05-31 | 4 |  | 0d |  |
| 13 |  | Análisis de provedores | 1d | 2018-05-24 | 2018-05-25 | 11 |  | 0d |  |
| 14 |  | Evaluar provedores de requerimientos | 1d | 2018-05-25 | 2018-05-28 | 13 |  | 0d |  |
| 15 |  | Selección de la técnica de recolección de datos | 4h | 2018-05-28 | 2018-05-29 | 14 |  | 0d |  |
| 16 |  | Aplicación de a técnica de recolección de datos seleccionada | 4h | 2018-05-29 | 2018-05-29 | 15 |  | 0d |  |
| 17 |  | Especificación de requisitos de software (ERS) | 2d | 2018-05-29 | 2018-05-31 | 16 |  | 0d |  |
| 18 | 1.4 | **Diseño** | 7d | 2018-05-31 | 2018-06-11 | 12 |  | 0d |  |
| 19 |  | Diagramas UML | 2d | 2018-05-31 | 2018-06-04 | 17 |  | 0d |  |
| 20 |  | Diagramas de la Base de datos | 2d | 2018-06-04 | 2018-06-06 | 19 |  | 0d |  |
| 21 |  | Mapa de navegación | 1d | 2018-06-06 | 2018-06-07 | 20 |  | 0d |  |
| 22 |  | Bocetos | 2d | 2018-06-07 | 2018-06-11 | 21, 20 |  | 0d |  |
| 23 | 1.5 | **Codificación** | 22d | 2018-06-11 | 2018-07-11 | 18 |  | 0d |  |
| 24 |  | Base de datos | 2d | 2018-06-11 | 2018-06-13 | 22 |  | 20d |  |
| 25 |  | Maquetación | 3d | 2018-06-11 | 2018-06-14 | 22 |  | 0d |  |
| 26 |  | Frontend | 9d | 2018-06-14 | 2018-06-27 | 25 |  | 0d |  |
| 27 |  | Backend | 10d | 2018-06-27 | 2018-07-11 | 26 |  | 0d |  |
| 28 | 1.6 | **Pruebas** | 12d | 2018-07-11 | 2018-07-27 | 23 |  | 0d |  |
| 29 |  | Pruebas unitarias | 6d | 2018-07-11 | 2018-07-19 | 27 |  | 0d |  |
| 30 |  | Pruebas de módulo | 6d | 2018-07-19 | 2018-07-27 | 29 |  | 0d |  |
| 31 | 1.7 | **Implementación** | 3.5d | 2018-07-27 | 2018-08-02 | 28 |  | 0d |  |
| 32 |  | Selección del hosting | 1d | 2018-07-27 | 2018-07-30 | 30 |  | 0d |  |
| 33 |  | Subir el sitio web | 4h | 2018-07-30 | 2018-07-31 | 32 |  | 0d |  |
| 34 |  | Pruebas de sistema | 2d | 2018-07-31 | 2018-08-02 | 33 |  | 0d |  |
| 35 | 1.8 | **Cierre del proyecto** | 0.25d | 2018-08-02 | 2018-08-02 | 31 |  | 0d |  |
| 36 |  | Carta de aceptación | 1h | 2018-08-02 | 2018-08-02 | 33 |  | 0.12d |  |
| 37 |  | Acta de cierre del proyecto | 2h | 2018-08-02 | 2018-08-02 | 33 |  | 0d |  |

## Version 2 (saved 2018-06-30)

Note of the change: Merge branch 'documentacion'

Last finish stays 2018-08-02. Complete tasks 4 → 19.

Changed:

| ID | Task | Start | Finish | Duration | Complete | Total float | Predecessors | Other |
| --- | --- | --- | --- | --- | --- | --- | --- | --- |
| 1 | **MPPP** | 2018-05-14 A → 2018-05-14 09:00 A | 2018-08-02 → 2018-08-02 13:00 |  | 8% → 51% | 0d → none |  |  |
| 2 | **Inicio** | 2018-05-14 A → 2018-05-14 09:00 A | 2018-05-14 → 2018-05-14 19:00 |  | 90% → 100% | 2d → none |  |  |
| 3 | Acta de inicio | 2018-05-14 A → 2018-05-14 09:00 A | 2018-05-14 → 2018-05-14 10:00 A | 1d → 1h | 90% → 100% | 2d → none |  | constraint start no earlier than 2018-05-14 → start no earlier than 2018-05-14 09:00 |
| 4 | **Planeación** | 2018-05-15 A → 2018-05-15 09:00 A | 2018-05-24 → 2018-05-24 19:00 | 7.75d → 8d | 55% → 100% | 0d → none |  |  |
| 5 | Presupuesto | 2018-05-15 → 2018-05-15 09:00 A | 2018-05-16 → 2018-05-15 19:00 A (-1d) | 2d → 1d | 0% → 100% | 5.75d → none |  | constraint finish no earlier than 2018-05-15 → finish no earlier than 2018-05-15 19:00; resources Líder de proyecto; Computadora (Desgaste de equipo); Luz; Mobiliario (Desgaste) → Líder de proyecto; Computadora (Desgaste de equipo) [80%]; Luz [80%]; Mobiliario (Desgaste) [80%] |
| 6 | Estudio de roles | 2018-05-17 A → 2018-05-16 09:00 A (-1d) | 2018-05-17 A → 2018-05-16 19:00 A (-1d) |  |  |  |  |  |
| 7 | Selección del ciclo de vida | 2018-05-18 A → 2018-05-17 09:00 A (-1d) | 2018-05-18 A → 2018-05-17 11:00 A (-1d) |  |  |  |  |  |
| 8 | Declaración del alcance | 2018-05-18 A → 2018-05-18 09:00 A | 2018-05-21 A → 2018-05-18 11:00 A (-3d) | 1d → 2h |  |  |  |  |
| 9 | Estructura de desglose de trabajo (EDT) | 2018-05-21 A → 2018-05-21 09:00 A | 2018-05-23 A → 2018-05-21 19:00 A (-2d) | 2d → 1d |  |  |  | constraint finish no earlier than 2018-05-18 → start no earlier than 2018-05-21 09:00; resources Líder de proyecto; Computadora (Desgaste de equipo); Luz; Mobiliario (Desgaste); Internet → Líder de proyecto; Computadora (Desgaste de equipo) [200%]; Luz [200%]; Mobiliario (Desgaste) [200%]; Internet [200%] |
| 10 | Plan de comunicación | 2018-05-23 → 2018-05-22 09:00 A (-1d) | 2018-05-23 → 2018-05-22 17:00 A (-1d) |  | 0% → 100% | 0d → none |  | constraint start no earlier than 2018-05-21 → start no earlier than 2018-05-22 09:00 |
| 11 | Póliticas de calidad | 2018-05-24 → 2018-05-23 09:00 A (-1d) | 2018-05-24 → 2018-05-23 11:00 A (-1d) | 6h → 2h | 0% → 100% | 0d → none |  | constraint start no earlier than 2018-05-22 → start no earlier than 2018-05-23 09:00; resources Líder de proyecto; Computadora (Desgaste de equipo); Internet; Luz; Mobiliario (Desgaste) → Líder de proyecto; Computadora (Desgaste de equipo) [90%]; Internet [90%]; Luz [90%]; Mobiliario (Desgaste) [90%] |
| 12 | **Análisis** | 2018-05-24 → 2018-05-25 09:00 A (+1d) | 2018-05-31 → 2018-06-01 19:00 A (+1d) | 5d → 6d | 0% → 100% | 0d → none |  |  |
| 13 | Análisis de provedores | 2018-05-24 → 2018-05-25 09:00 A (+1d) | 2018-05-25 → 2018-05-25 13:00 A | 1d → 4h | 0% → 100% | 0d → none |  | resources Analista; Computadora (Desgaste de equipo); Internet; Luz; Mobiliario (Desgaste) → Analista; Computadora (Desgaste de equipo) [200%]; Internet [200%]; Luz [200%]; Mobiliario (Desgaste) [200%] |
| 14 | Evaluar provedores de requerimientos | 2018-05-25 → 2018-05-28 09:00 A (+3d) | 2018-05-28 → 2018-05-28 13:00 A | 1d → 4h | 0% → 100% | 0d → none |  | resources Analista; Bolígrafo; Hojas de papel → Analista; Bolígrafo [200%]; Hojas de papel [200%] |
| 15 | Selección de la técnica de recolección de datos | 2018-05-28 → 2018-05-29 09:00 A (+1d) | 2018-05-29 → 2018-05-29 11:00 A | 4h → 2h | 0% → 100% | 0d → none |  |  |
| 16 | Aplicación de a técnica de recolección de datos seleccionada | 2018-05-29 → 2018-05-30 09:00 A (+1d) | 2018-05-29 → 2018-05-30 11:00 A (+1d) | 4h → 2h | 0% → 100% | 0d → none |  | resources none → Analista; Bolígrafo; Computadora (Desgaste de equipo); Hojas de papel; Internet; Luz; Mobiliario (Desgaste) |
| 17 | Especificación de requisitos de software (ERS) | 2018-05-29 → 2018-05-31 09:00 A (+2d) | 2018-05-31 → 2018-06-01 19:00 A (+1d) |  | 0% → 100% | 0d → none |  | resources Diseñador; Bolígrafo; Computadora (Desgaste de equipo); Hojas de papel; Luz; Mobiliario (Desgaste) → Diseñador; Bolígrafo [200%]; Computadora (Desgaste de equipo) [200%]; Hojas de papel [200%]; Luz [200%]; Mobiliario (Desgaste) [200%] |
| 18 | **Diseño** | 2018-05-31 → 2018-06-04 09:00 A (+4d) | 2018-06-11 → 2018-06-12 19:00 A (+1d) |  | 0% → 100% | 0d → none |  |  |
| 19 | Diagramas UML | 2018-05-31 → 2018-06-04 09:00 A (+4d) | 2018-06-04 → 2018-06-04 19:00 A | 2d → 1d | 0% → 100% | 0d → none |  | resources Diseñador; Computadora (Desgaste de equipo); Luz; Mobiliario (Desgaste) → Diseñador; Computadora (Desgaste de equipo) [200%]; Luz [200%]; Mobiliario (Desgaste) [200%] |
| 20 | Diagramas de la Base de datos | 2018-06-04 → 2018-06-05 09:00 A (+1d) | 2018-06-06 → 2018-06-07 13:00 A (+1d) | 2d → 20h | 0% → 100% | 0d → none |  | resources Diseñador; Computadora (Desgaste de equipo); Luz; Mobiliario (Desgaste); Internet → Diseñador; Computadora (Desgaste de equipo) [200%]; Luz [200%]; Mobiliario (Desgaste) [200%]; Internet [200%] |
| 21 | Mapa de navegación | 2018-06-06 → 2018-06-08 09:00 A (+2d) | 2018-06-07 → 2018-06-08 13:00 A (+1d) | 1d → 4h | 0% → 100% | 0d → none |  |  |
| 22 | Bocetos | 2018-06-07 → 2018-06-11 09:00 A (+4d) | 2018-06-11 → 2018-06-12 19:00 A (+1d) |  | 0% → 100% | 0d → none |  |  |
| 23 | **Codificación** | 2018-06-11 → 2018-06-13 09:00 A (+2d) | 2018-07-11 → 2018-07-17 19:00 (+6d) | 22d → 25d | 0% → 46% | 0d → none |  |  |
| 24 | Base de datos | 2018-06-11 → 2018-06-13 09:00 A (+2d) | 2018-06-13 → 2018-06-14 19:00 A (+1d) |  | 0% → 100% | 20d → none |  |  |
| 25 | Maquetación | 2018-06-11 → 2018-06-15 09:00 A (+4d) | 2018-06-14 → 2018-06-18 19:00 A (+4d) | 3d → 2d | 0% → 100% | 0d → none | 22 → 24, 22 |  |
| 26 | Frontend | 2018-06-14 → 2018-06-19 09:00 A (+5d) | 2018-06-27 → 2018-07-02 19:00 (+5d) | 9d → 10d | 0% → 70% | 0d → none |  | resources Programador 1; Programador 2; Programador 3; Programador 4 → Programador 1; Programador 2; Programador 3; Programador 4; Computadora (Desgaste de equipo); Internet; Luz; Mobiliario (Desgaste) |
| 27 | Backend | 2018-06-27 → 2018-07-04 09:00 (+7d) | 2018-07-11 → 2018-07-17 19:00 (+6d) |  |  | 0d → none |  |  |
| 28 | **Pruebas** | 2018-07-11 → 2018-07-18 09:00 (+7d) | 2018-07-27 → 2018-07-26 19:00 (-1d) | 12d → 7d |  | 0d → none |  |  |
| 29 | Pruebas unitarias | 2018-07-11 → 2018-07-18 09:00 (+7d) | 2018-07-19 → 2018-07-20 19:00 (+1d) | 6d → 3d |  | 0d → none |  |  |
| 30 | Pruebas de módulo | 2018-07-19 → 2018-07-23 09:00 (+4d) | 2018-07-27 → 2018-07-26 19:00 (-1d) | 6d → 4d |  | 0d → none |  |  |
| 31 | **Implementación** | 2018-07-27 → 2018-07-27 09:00 | 2018-08-02 → 2018-08-01 19:00 (-1d) | 3.5d → 4d |  | 0d → none |  |  |
| 32 | Selección del hosting | 2018-07-27 → 2018-07-27 09:00 | 2018-07-30 → 2018-07-27 19:00 (-3d) |  |  | 0d → none |  | resources none → Computadora (Desgaste de equipo); Internet; Luz; Diseñador; Mobiliario (Desgaste) |
| 33 | Subir el sitio web | 2018-07-30 → 2018-07-30 09:00 | 2018-07-31 → 2018-07-30 13:00 (-1d) |  |  | 0d → none |  |  |
| 34 | Pruebas de sistema | 2018-07-31 → 2018-07-31 09:00 | 2018-08-02 → 2018-08-01 19:00 (-1d) |  |  | 0d → none |  |  |
| 35 | **Cierre del proyecto** | 2018-08-02 → 2018-08-02 11:00 | 2018-08-02 → 2018-08-02 13:00 |  |  | 0d → none |  |  |
| 36 | Carta de aceptación | 2018-08-02 → 2018-08-02 11:00 | 2018-08-02 → 2018-08-02 13:00 | 1h → 2h |  | 0.12d → none |  |  |
| 37 | Acta de cierre del proyecto | 2018-08-02 → 2018-08-02 11:00 | 2018-08-02 → 2018-08-02 13:00 |  |  | 0d → none |  |  |

## Version 3 (saved 2018-08-04)

Note of the change: Planeacion: EDT(project)...se adecuó al ciclo de vida en V, Presupuesto...se modificó la duraccion de las tareas para hacer una estimacion del costo del proyecto, GANTT...se cambió el flujo de tareas y su duracion

Last finish 2018-08-02 → 2018-08-03 (+1d). Complete tasks 19 → 70.

Added:

| ID | Task | Duration | Start | Finish | Predecessors | Resources |
| --- | --- | --- | --- | --- | --- | --- |
| 4 | **Hitos** | 0d | 2018-05-14 A | 2018-05-14 A |  |  |
| 5 | Documento de la acta de inicio | 0d | 2018-05-14 A | 2018-05-14 A |  |  |
| 13 | **Hitos** | 0d | 2018-05-23 | 2018-05-23 |  |  |
| 14 | Documento presupuesto | 0d | 2018-05-15 A | 2018-05-15 A |  |  |
| 15 | Documento estudio de roles | 0d | 2018-05-15 A | 2018-05-15 A |  |  |
| 16 | Documento selección del ciclo de vida | 0d | 2018-05-15 A | 2018-05-15 A |  |  |
| 17 | Documento declaracion de alcance | 0d | 2018-05-15 A | 2018-05-15 A |  |  |
| 18 | Documento EDT | 0d | 2018-05-15 A | 2018-05-15 A |  |  |
| 19 | Documento plan de comunicación | 0d | 2018-05-15 A | 2018-05-15 A |  |  |
| 26 | **Hitos** | 0d | 2018-06-01 | 2018-06-01 |  |  |
| 27 | Documento análisis de provedores | 0d | 2018-05-25 A | 2018-05-25 A |  |  |
| 28 | Documento provedores de requerimiento | 0d | 2018-05-25 A | 2018-05-25 A |  |  |
| 29 | Documento selección de la técnica de recolección de datos | 0d | 2018-05-25 A | 2018-05-25 A |  |  |
| 30 | Documento aplicación de la técnica de recolección de datos seleccionada | 0d | 2018-05-25 A | 2018-05-25 A |  |  |
| 31 | Documento ERS | 0d | 2018-05-25 A | 2018-05-25 A |  |  |
| 37 | **Hitos** | 0d | 2018-06-12 A | 2018-06-12 A |  |  |
| 38 | Documento diagramas UML | 0d | 2018-06-12 A | 2018-06-12 A |  |  |
| 39 | Documento diagramas de la BD | 0d | 2018-06-12 A | 2018-06-12 A |  |  |
| 40 | Documento mapa de navegación | 0d | 2018-06-12 A | 2018-06-12 A |  |  |
| 41 | Imágenes de los bocetos | 0d | 2018-06-12 A | 2018-06-12 A |  |  |
| 46 | Index | 3d | 2018-06-28 A | 2018-07-02 A | 47, 48, 49 | Programador 2; Computadora (Desgaste de equipo) [300%]; Internet [300%]; Luz [300%]; Mobiliario (Desgaste) [300%] |
| 47 | Invernadero | 3d | 2018-06-25 A | 2018-06-27 A | 51 | Programador 2; Computadora (Desgaste de equipo); Internet; Luz; Mobiliario (Desgaste) |
| 48 | Campañas | 2d | 2018-06-21 A | 2018-06-22 A | 50 | Programador 1; Computadora (Desgaste de equipo); Internet; Luz; Mobiliario (Desgaste) |
| 49 | Socios | 2d | 2018-06-25 A | 2018-06-26 A | 52 | Programador 3; Computadora (Desgaste de equipo); Internet; Luz; Mobiliario (Desgaste) |
| 50 | Comentarios | 2d | 2018-06-19 A | 2018-06-20 A | 44 | Programador 1; Computadora (Desgaste de equipo) [200%]; Internet [200%]; Luz [200%]; Mobiliario (Desgaste) [200%] |
| 51 | FAQs | 2d | 2018-06-20 A | 2018-06-21 A | 44 | Programador 2; Computadora (Desgaste de equipo) [200%]; Internet [200%]; Luz [200%]; Mobiliario (Desgaste) [200%] |
| 52 | ¿Quiénes somos? | 2d | 2018-06-21 A | 2018-06-22 A | 44 | Programador 3; Computadora (Desgaste de equipo) [200%]; Internet [200%]; Luz [200%]; Mobiliario (Desgaste) [200%] |
| 53 | Login/Registro | 2d | 2018-06-21 A | 2018-06-22 A | 44 | Programador 4; Computadora (Desgaste de equipo) [200%]; Internet [200%]; Luz [200%]; Mobiliario (Desgaste) [200%] |
| 54 | Perfil | 2d | 2018-06-25 A | 2018-06-26 A | 53 | Programador 4; Computadora (Desgaste de equipo) [200%]; Internet [200%]; Luz [200%]; Mobiliario (Desgaste) [200%] |
| 56 | Adopciones | 3d | 2018-07-13 A | 2018-07-17 A | 57 | Programador 1; Computadora (Desgaste de equipo); Internet; Luz; Mobiliario (Desgaste) |
| 57 | Invernaredo | 3d | 2018-07-10 A | 2018-07-12 A | 60 | Programador 2; Computadora (Desgaste de equipo); Internet; Luz; Mobiliario (Desgaste) |
| 58 | Campañas | 2d | 2018-07-09 A | 2018-07-10 A | 59 | Programador 1; Computadora (Desgaste de equipo); Internet; Luz; Mobiliario (Desgaste) |
| 59 | Comentarios | 2d | 2018-07-04 A | 2018-07-05 A | 50 | Programador 1; Computadora (Desgaste de equipo); Internet; Luz; Mobiliario (Desgaste) |
| 60 | FAQs | 2d | 2018-07-06 A | 2018-07-09 A | 51 | Programador 2; Computadora (Desgaste de equipo); Internet; Luz; Mobiliario (Desgaste) |
| 61 | Usuarios | 3d | 2018-07-09 A | 2018-07-11 A | 62 | Programador 3; Computadora (Desgaste de equipo); Internet; Luz; Mobiliario (Desgaste) |
| 62 | ¿Quiénes somos? | 2d | 2018-07-04 A | 2018-07-05 A | 52 | Programador 3; Computadora (Desgaste de equipo); Internet; Luz; Mobiliario (Desgaste) |
| 63 | **Hitos** | 0d | 2018-07-17 A | 2018-07-17 A |  |  |
| 64 | Archivo sql de la base de datos | 0d | 2018-07-17 A | 2018-07-17 A |  |  |
| 65 | Archivo de maquetación php, css y js | 0d | 2018-07-17 A | 2018-07-17 A |  |  |
| 66 | Index archivos view, model y controller | 0d | 2018-07-17 A | 2018-07-17 A |  |  |
| 67 | Invernadero archivos view, model y controller | 0d | 2018-07-17 A | 2018-07-17 A |  |  |
| 68 | Campañas archivos view, model y controller | 0d | 2018-07-17 A | 2018-07-17 A |  |  |
| 69 | Socios archivos view, model y controller | 0d | 2018-07-17 A | 2018-07-17 A |  |  |
| 70 | Comentarios archivos view, model y controller | 0d | 2018-07-17 A | 2018-07-17 A |  |  |
| 71 | FAQs archivos view, model y controller | 0d | 2018-07-17 A | 2018-07-17 A |  |  |
| 72 | ¿Quiénes somos? Archivos view, model y controller | 0d | 2018-07-17 A | 2018-07-17 A |  |  |
| 73 | Login/Registro archivos view, model y controller | 0d | 2018-07-17 A | 2018-07-17 A |  |  |
| 74 | Usuario archivos view, model y controller | 0d | 2018-07-17 A | 2018-07-17 A |  |  |
| 78 | Pruebas de validacion | 2d | 2018-07-27 A | 2018-07-30 | 77 | Téster; Computadora (Desgaste de equipo); Internet; Luz; Mobiliario (Desgaste) |
| 79 | **Hitos** | 0d | 2018-07-30 A | 2018-07-30 A |  |  |
| 80 | Documento de pruebas | 0d | 2018-07-30 A | 2018-07-30 A |  |  |
| 85 | **Hitos** | 0d | 2018-08-03 A | 2018-08-03 A |  |  |
| 86 | Documento selección de hosting | 0d | 2018-08-03 A | 2018-08-03 A |  |  |
| 87 | Documento pruebas de sistema | 0d | 2018-08-03 A | 2018-08-03 A |  |  |
| 91 | **Hitos** | 0.25d | 2018-08-03 A | 2018-08-03 A |  |  |
| 92 | Documento carta de aceptación | 0.25d | 2018-08-03 A | 2018-08-03 A |  |  |
| 93 | Documento acta de cierre del proyecto | 0.25d | 2018-08-03 A | 2018-08-03 A |  |  |

Removed: 11 Póliticas de calidad

Changed:

| ID | Task | Start | Finish | Duration | Complete | Predecessors | Other |
| --- | --- | --- | --- | --- | --- | --- | --- |
| 1 | **MPPP** | 2018-05-14 09:00 A → 2018-05-14 A | 2018-08-02 13:00 → 2018-08-03 (+1d) | 58.5d → 60d | 51% → 98% |  |  |
| 2 | **Inicio** | 2018-05-14 09:00 A → 2018-05-14 A | 2018-05-14 19:00 → 2018-05-14 A |  |  |  |  |
| 3 | Acta de inicio | 2018-05-14 09:00 A → 2018-05-14 A | 2018-05-14 10:00 A → 2018-05-14 A |  |  |  | constraint start no earlier than 2018-05-14 09:00 → start no earlier than 2018-05-14 |
| 6 | **Planeación** | 2018-05-15 09:00 A → 2018-05-15 A | 2018-05-24 19:00 → 2018-05-23 (-1d) | 8d → 7d |  |  |  |
| 7 | Presupuesto | 2018-05-15 09:00 A → 2018-05-15 A | 2018-05-15 19:00 A → 2018-05-15 A |  |  |  | constraint finish no earlier than 2018-05-15 19:00 → finish no earlier than 2018-05-15 |
| 8 | Estudio de roles | 2018-05-16 09:00 A → 2018-05-16 A | 2018-05-16 19:00 A → 2018-05-16 A |  |  |  |  |
| 9 | Selección del ciclo de vida | 2018-05-17 09:00 A → 2018-05-17 A | 2018-05-17 11:00 A → 2018-05-17 A |  |  |  |  |
| 10 | Declaración del alcance | 2018-05-18 09:00 A → 2018-05-18 A | 2018-05-18 11:00 A → 2018-05-18 A |  |  |  |  |
| 11 | Estructura de desglose de trabajo (EDT) | 2018-05-21 09:00 A → 2018-05-21 A | 2018-05-21 19:00 A → 2018-05-21 A |  |  |  | constraint start no earlier than 2018-05-21 09:00 → start no earlier than 2018-05-21 |
| 12 | Plan de comunicación | 2018-05-22 09:00 A → 2018-05-22 A | 2018-05-22 17:00 A → 2018-05-22 A |  |  |  | constraint start no earlier than 2018-05-22 09:00 → start no earlier than 2018-05-22 |
| 20 | **Análisis** | 2018-05-25 09:00 A → 2018-05-24 A (-1d) | 2018-06-01 19:00 A → 2018-06-01 | 6d → 7d | 100% → 70% |  |  |
| 21 | Análisis de provedores | 2018-05-25 09:00 A → 2018-05-24 A (-1d) | 2018-05-25 13:00 A → 2018-05-25 | 4h → 16h | 100% → 25% | Póliticas de calidad → 12 | resources Analista; Computadora (Desgaste de equipo) [200%]; Internet [200%]; Luz [200%]; Mobiliario (Desgaste) [200%] → Analista; Computadora (Desgaste de equipo) [300%]; Internet [300%]; Luz [300%]; Mobiliario (Desgaste) [300%] |
| 22 | Evaluar provedores de requerimientos | 2018-05-28 09:00 A → 2018-05-28 A | 2018-05-28 13:00 A → 2018-05-28 A |  |  |  |  |
| 23 | Selección de la técnica de recolección de datos | 2018-05-29 09:00 A → 2018-05-29 A | 2018-05-29 11:00 A → 2018-05-29 A |  |  |  |  |
| 24 | Aplicación de a técnica de recolección de datos seleccionada | 2018-05-30 09:00 A → 2018-05-30 A | 2018-05-30 11:00 A → 2018-05-30 A |  |  |  |  |
| 25 | Especificación de requisitos de software (ERS) | 2018-05-31 09:00 A → 2018-05-31 A | 2018-06-01 19:00 A → 2018-06-01 A |  |  |  |  |
| 32 | **Diseño** | 2018-06-04 09:00 A → 2018-06-04 A | 2018-06-12 19:00 A → 2018-06-12 A |  |  |  |  |
| 33 | Diagramas UML | 2018-06-04 09:00 A → 2018-06-04 A | 2018-06-04 19:00 A → 2018-06-04 A |  |  |  |  |
| 34 | Diagramas de la Base de datos | 2018-06-05 09:00 A → 2018-06-05 A | 2018-06-07 13:00 A → 2018-06-07 A |  |  |  |  |
| 35 | Mapa de navegación | 2018-06-08 09:00 A → 2018-06-08 A | 2018-06-08 13:00 A → 2018-06-08 A |  |  |  |  |
| 36 | Bocetos | 2018-06-11 09:00 A → 2018-06-11 A | 2018-06-12 19:00 A → 2018-06-12 A |  |  | 35, 34 → 35 |  |
| 42 | **Codificación** | 2018-06-13 09:00 A → 2018-06-13 A | 2018-07-17 19:00 → 2018-07-17 A |  | 46% → 100% |  |  |
| 43 | Base de datos | 2018-06-13 09:00 A → 2018-06-13 A | 2018-06-14 19:00 A → 2018-06-14 A |  |  |  |  |
| 44 | Maquetación | 2018-06-15 09:00 A → 2018-06-15 A | 2018-06-18 19:00 A → 2018-06-18 A |  |  | 43, 36 → 43 |  |
| 45 | **Frontend** | 2018-06-19 09:00 A → 2018-06-19 A | 2018-07-02 19:00 → 2018-07-02 A |  | 70% → 100% | 44 → none | resources Programador 1; Programador 2; Programador 3; Programador 4; Computadora (Desgaste de equipo); Internet; Luz; Mobiliario (Desgaste) → none |
| 55 | **Backend** | 2018-07-04 09:00 → 2018-07-04 A | 2018-07-17 19:00 → 2018-07-17 A |  | 0% → 100% |  | resources Programador 1; Programador 2; Programador 3; Programador 4 → none |
| 75 | **Pruebas** | 2018-07-18 09:00 → 2018-07-18 A | 2018-07-26 19:00 → 2018-07-30 (+4d) | 7d → 9d | 0% → 99% |  |  |
| 76 | Pruebas unitarias | 2018-07-18 09:00 → 2018-07-18 A | 2018-07-20 19:00 → 2018-07-20 |  | 0% → 99% |  | resources Luz; Mobiliario (Desgaste); Téster; Computadora (Desgaste de equipo); Internet → Internet; Luz; Mobiliario (Desgaste); Téster; Computadora (Desgaste de equipo) |
| 77 | Pruebas de módulo | 2018-07-23 09:00 → 2018-07-23 A | 2018-07-26 19:00 → 2018-07-26 |  | 0% → 99% |  | resources Computadora (Desgaste de equipo); Internet; Luz; Mobiliario (Desgaste); Téster → Téster; Computadora (Desgaste de equipo); Internet; Luz; Mobiliario (Desgaste) |
| 81 | **Implementación** | 2018-07-27 09:00 → 2018-07-31 A (+4d) | 2018-08-01 19:00 → 2018-08-03 A (+2d) |  | 0% → 100% |  |  |
| 82 | Selección del hosting | 2018-07-27 09:00 → 2018-07-31 A (+4d) | 2018-07-27 19:00 → 2018-07-31 A (+4d) |  | 0% → 100% | 77 → 78 |  |
| 83 | Subir el sitio web | 2018-07-30 09:00 → 2018-08-01 A (+2d) | 2018-07-30 13:00 → 2018-08-01 A (+2d) |  | 0% → 100% |  |  |
| 84 | Pruebas de sistema | 2018-07-31 09:00 → 2018-08-02 A (+2d) | 2018-08-01 19:00 → 2018-08-03 A (+2d) | 2d → 1.5d | 0% → 100% |  |  |
| 88 | **Cierre del proyecto** | 2018-08-02 11:00 → 2018-08-03 A (+1d) | 2018-08-02 13:00 → 2018-08-03 A (+1d) |  | 0% → 100% |  |  |
| 89 | Carta de aceptación | 2018-08-02 11:00 → 2018-08-03 A (+1d) | 2018-08-02 13:00 → 2018-08-03 A (+1d) |  | 0% → 100% | 83 → 84 |  |
| 90 | Acta de cierre del proyecto | 2018-08-02 11:00 → 2018-08-03 A (+1d) | 2018-08-02 13:00 → 2018-08-03 A (+1d) |  | 0% → 100% | 83 → 84 |  |

## Version 4 (saved 2018-08-04)

Note of the change: Merge branch 'documentacion'

Last finish stays 2018-08-03.

Changed:

| ID | Task | Other |
| --- | --- | --- |
| 12 | Matriz de comunicación | was named Plan de comunicación |
